# Software Development

How a schedule from MS Project changed from version to version. A marks actual dates.

## Version 1 (saved 2014-10-26)

| ID | WBS | Task | Duration | Start | Finish | Predecessors | Total float |
| --- | --- | --- | --- | --- | --- | --- | --- |
| 1 | 1 | **Scope** | 3.5d | 2000-01-03 | 2000-01-06 |  | 0d |
| 2 |  | Determine project scope | 4h | 2000-01-03 | 2000-01-03 |  | 0d |
| 3 |  | Secure project sponsorship | 1d | 2000-01-03 | 2000-01-04 | 2 | 0d |
| 4 |  | Define preliminary resources | 1d | 2000-01-04 | 2000-01-05 | 3 | 0d |
| 5 |  | Secure core resources | 1d | 2000-01-05 | 2000-01-06 | 4 | 0d |
| 6 |  | Scope complete | 0d | 2000-01-06 | 2000-01-06 | 5 | 0d |
| 7 | 2 | **Analysis/Software Requirements** | 14d | 2000-01-06 | 2000-01-26 |  | 0d |
| 8 |  | Conduct needs analysis | 5d | 2000-01-06 | 2000-01-13 | 6 | 0d |
| 9 |  | Draft preliminary software specifications | 3d | 2000-01-13 | 2000-01-18 | 8 | 0d |
| 10 |  | Develop preliminary budget | 2d | 2000-01-18 | 2000-01-20 | 9 | 0d |
| 11 |  | Review software specifications/budget with team | 4h | 2000-01-20 | 2000-01-20 | 10 | 0d |
| 12 |  | Incorporate feedback on software specifications | 1d | 2000-01-21 | 2000-01-21 | 11 | 0d |
| 13 |  | Develop delivery timeline | 1d | 2000-01-24 | 2000-01-24 | 12 | 0d |
| 14 |  | Obtain approvals to proceed (concept, timeline, budget) | 4h | 2000-01-25 | 2000-01-25 | 13 | 0d |
| 15 |  | Secure required resources | 1d | 2000-01-25 | 2000-01-26 | 14 | 0d |
| 16 |  | Analysis complete | 0d | 2000-01-26 | 2000-01-26 | 15 | 0d |
| 17 | 3 | **Design** | 14.5d | 2000-01-26 | 2000-02-15 |  | 0d |
| 18 |  | Review preliminary software specifications | 2d | 2000-01-26 | 2000-01-28 | 16 | 0d |
| 19 |  | Develop functional specifications | 5d | 2000-01-28 | 2000-02-04 | 18 | 0d |
| 20 |  | Develop prototype based on functional specifications | 4d | 2000-02-04 | 2000-02-10 | 19 | 0d |
| 21 |  | Review functional specifications | 2d | 2000-02-10 | 2000-02-14 | 20 | 0d |
| 22 |  | Incorporate feedback into functional specifications | 1d | 2000-02-14 | 2000-02-15 | 21 | 0d |
| 23 |  | Obtain approval to proceed | 4h | 2000-02-15 | 2000-02-15 | 22 | 0d |
| 24 |  | Design complete | 0d | 2000-02-15 | 2000-02-15 | 23 | 0d |
| 25 | 4 | **Development** | 21.75d | 2000-02-16 | 2000-03-16 |  | 0d |
| 26 |  | Review functional specifications | 1d | 2000-02-16 | 2000-02-16 | 24 | 0d |
| 27 |  | Identify modular/tiered design parameters | 1d | 2000-02-17 | 2000-02-17 | 26 | 0d |
| 28 |  | Assign development staff | 1d | 2000-02-18 | 2000-02-18 | 27 | 0d |
| 29 |  | Develop code | 15d | 2000-02-21 | 2000-03-10 | 28 | 0d |
| 30 |  | Developer testing (primary debugging) | 15d | 2000-02-24 | 2000-03-16 | 29FS-7.5% | 0d |
| 31 |  | Development complete | 0d | 2000-03-16 | 2000-03-16 | 30 | 0d |
| 32 | 5 | **Testing** | 48.75d | 2000-02-16 | 2000-04-24 |  | 15d |
| 33 |  | Develop unit test plans using product specifications | 4d | 2000-02-16 | 2000-02-21 | 24 | 17.75d |
| 34 |  | Develop integration test plans using product specifications | 4d | 2000-02-16 | 2000-02-21 | 24 | 59.75d |
| 35 | 5.3 | **Unit Testing** | 15d | 2000-03-16 | 2000-04-06 |  | 0d |
| 36 |  | Review modular code | 5d | 2000-03-16 | 2000-03-23 | 33, 31 | 0d |
| 37 |  | Test component modules to product specifications | 2d | 2000-03-23 | 2000-03-27 | 31, 36 | 0d |
| 38 |  | Identify anomalies to product specifications | 3d | 2000-03-27 | 2000-03-30 | 37 | 0d |
| 39 |  | Modify code | 3d | 2000-03-30 | 2000-04-04 | 38 | 0d |
| 40 |  | Re-test modified code | 2d | 2000-04-04 | 2000-04-06 | 39 | 0d |
| 41 |  | Unit testing complete | 0d | 2000-04-06 | 2000-04-06 | 40 | 0d |
| 42 | 5.4 | **Integration Testing** | 12d | 2000-04-06 | 2000-04-24 |  | 0d |
| 43 |  | Test module integration | 5d | 2000-04-06 | 2000-04-13 | 41 | 0d |
| 44 |  | Identify anomalies to specifications | 2d | 2000-04-13 | 2000-04-17 | 43 | 0d |
| 45 |  | Modify code | 3d | 2000-04-17 | 2000-04-20 | 44 | 0d |
| 46 |  | Re-test modified code | 2d | 2000-04-20 | 2000-04-24 | 45 | 0d |
| 47 |  | Integration testing complete | 0d | 2000-04-24 | 2000-04-24 | 46 | 0d |
| 48 | 6 | **Training** | 45.75d | 2000-02-16 | 2000-04-19 |  | 3d |
| 49 |  | Develop training specifications for end users | 3d | 2000-02-16 | 2000-02-18 | 24 | 21.75d |
| 50 |  | Develop training specifications for helpdesk support staff | 3d | 2000-02-16 | 2000-02-18 | 24 | 21.75d |
| 51 |  | Identify training delivery methodology (computer based training, classroom, etc.) | 2d | 2000-02-16 | 2000-02-17 | 24 | 22.75d |
| 52 |  | Develop training materials | 3w | 2000-03-16 | 2000-04-06 | 49, 31, 50, 51 | 3d |
| 53 |  | Conduct training usability study | 4d | 2000-04-06 | 2000-04-12 | 52 | 3d |
| 54 |  | Finalize training materials | 3d | 2000-04-12 | 2000-04-17 | 53 | 3d |
| 55 |  | Develop training delivery mechanism | 2d | 2000-04-17 | 2000-04-19 | 54 | 3d |
| 56 |  | Training materials complete | 0d | 2000-04-19 | 2000-04-19 | 55 | 3d |
| 57 | 7 | **Documentation** | 30.5d | 2000-02-16 | 2000-03-29 |  | 18.25d |
| 58 |  | Develop Help specification | 1d | 2000-02-16 | 2000-02-16 | 24 | 27.75d |
| 59 |  | Develop Help system | 3w | 2000-03-01 | 2000-03-22 | 58, 29FS-5% | 18.25d |
| 60 |  | Review Help documentation | 3d | 2000-03-22 | 2000-03-27 | 59 | 18.25d |
| 61 |  | Incorporate Help documentation feedback | 2d | 2000-03-27 | 2000-03-29 | 60 | 18.25d |
| 62 |  | Develop user manuals specifications | 2d | 2000-02-16 | 2000-02-17 | 24 | 27.75d |
| 63 |  | Develop user manuals | 3w | 2000-03-01 | 2000-03-22 | 62, 29FS-5% | 19.25d |
| 64 |  | Review all user documentation | 2d | 2000-03-22 | 2000-03-24 | 63 | 19.25d |
| 65 |  | Incorporate user documentation feedback | 2d | 2000-03-24 | 2000-03-28 | 64 | 19.25d |
| 66 |  | Documentation complete | 0d | 2000-03-29 | 2000-03-29 | 65, 61 | 18.25d |
| 67 | 8 | **Pilot** | 70.25d | 2000-01-26 | 2000-05-03 |  | 0d |
| 68 |  | Identify test group | 1d | 2000-01-26 | 2000-01-27 | 16 | 61.25d |
| 69 |  | Develop software delivery mechanism | 1d | 2000-01-27 | 2000-01-28 | 68 | 61.25d |
| 70 |  | Install/deploy software | 1d | 2000-04-24 | 2000-04-25 | 47, 69, 66, 56 | 0d |

| ID | WBS | Task | Duration | Start | Finish | Predecessors | Total float |
| --- | --- | --- | --- | --- | --- | --- | --- |
| 71 |  | Obtain user feedback | 1w | 2000-04-25 | 2000-05-02 | 70 | 0d |
| 72 |  | Evaluate testing information | 1d | 2000-05-02 | 2000-05-03 | 71 | 0d |
| 73 |  | Pilot complete | 0d | 2000-05-03 | 2000-05-03 | 72 | 0d |
| 74 | 9 | **Deployment** | 5d | 2000-05-03 | 2000-05-10 |  | 0d |
| 75 |  | Determine final deployment strategy | 1d | 2000-05-03 | 2000-05-04 | 73 | 0d |
| 76 |  | Develop deployment methodology | 1d | 2000-05-04 | 2000-05-05 | 75 | 0d |
| 77 |  | Secure deployment resources | 1d | 2000-05-05 | 2000-05-08 | 76 | 0d |
| 78 |  | Train support staff | 1d | 2000-05-08 | 2000-05-09 | 77 | 0d |
| 79 |  | Deploy software | 1d | 2000-05-09 | 2000-05-10 | 78 | 0d |
| 80 |  | Deployment complete | 0d | 2000-05-10 | 2000-05-10 | 79 | 0d |
| 81 | 10 | **Post Implementation Review** | 3d | 2000-05-10 | 2000-05-15 |  | 0d |
| 82 |  | Document lessons learned | 1d | 2000-05-10 | 2000-05-11 | 80 | 0d |
| 83 |  | Distribute to team members | 1d | 2000-05-11 | 2000-05-12 | 82 | 0d |
| 84 |  | Create software maintenance team | 1d | 2000-05-12 | 2000-05-15 | 83 | 0d |
| 85 |  | Post implementation review complete | 0d | 2000-05-15 | 2000-05-15 | 84 | 0d |
| 86 |  | Software development template complete | 0d | 2000-05-15 | 2000-05-15 | 85 | 0d |

## Version 2 (saved 2014-10-26)

Note of the change: Sprinty, custom fields

Last finish 2000-05-15 → 2015-05-01 (+5464d).

Added:

| ID | Task | Duration | Start | Finish | Predecessors | Resources |
| --- | --- | --- | --- | --- | --- | --- |
| 43 | **Dokumentacja** | 30.5d | 2014-12-04 | 2015-01-15 |  |  |
| 44 | Develop Help specification | 1d | 2014-12-04 | 2014-12-05 | 18 | Pomoc/Helpdesk |
| 45 | Develop Help system | 3w | 2014-12-19 | 2015-01-08 | 44, 23FS-5% | Pomoc/Helpdesk |
| 46 | Review Help documentation | 3d | 2015-01-09 | 2015-01-13 | 45 | Pomoc/Helpdesk |
| 47 | Incorporate Help documentation feedback | 2d | 2015-01-14 | 2015-01-15 | 46 | Pomoc/Helpdesk |
| 48 | Develop user manuals specifications | 2d | 2014-12-04 | 2014-12-08 | 18 | Pomoc/Helpdesk |
| 49 | Develop user manuals | 3w | 2014-12-19 | 2015-01-08 | 48, 23FS-5% | Pomoc/Helpdesk |
| 50 | Review all user documentation | 2d | 2015-01-09 | 2015-01-12 | 49 | Pomoc/Helpdesk |
| 51 | Incorporate user documentation feedback | 2d | 2015-01-13 | 2015-01-14 | 50 | Pomoc/Helpdesk |
| 52 | Documentation complete | 0d | 2015-01-15 | 2015-01-15 | 47, 51 |  |
| 75 | **Implemementacja** | 21.75d | 2015-02-24 | 2015-03-25 |  |  |
| 76 | Review functional specifications | 1d | 2015-02-24 | 2015-02-24 | 74 | Deweloper |
| 77 | Identify modular/tiered design parameters | 1d | 2015-02-25 | 2015-02-25 | 76 | Deweloper |
| 78 | Assign development staff | 1d | 2015-02-26 | 2015-02-26 | 77 | Deweloper |
| 79 | Develop code | 15d | 2015-02-27 | 2015-03-19 | 78 | Deweloper |
| 80 | Developer testing (primary debugging) | 15d | 2015-03-04 | 2015-03-25 | 79FS-7.5% | Deweloper |
| 81 | Development complete | 0d | 2015-03-25 | 2015-03-25 | 80 |  |
| 82 | **Testowanie** | 48.75d | 2015-02-24 | 2015-05-01 |  |  |
| 83 | Develop unit test plans using product specifications | 4d | 2015-02-24 | 2015-02-27 | 74 | Testerzy |
| 84 | Develop integration test plans using product specifications | 4d | 2015-02-24 | 2015-02-27 | 74 | Testerzy |
| 85 | **Testy jednostkowe** | 15d | 2015-03-25 | 2015-04-15 |  |  |
| 86 | Review modular code | 5d | 2015-03-25 | 2015-04-01 | 81, 83 | Testerzy |
| 87 | Test component modules to product specifications | 2d | 2015-04-01 | 2015-04-03 | 81, 86 | Testerzy |
| 88 | Identify anomalies to product specifications | 3d | 2015-04-03 | 2015-04-08 | 87 | Testerzy |
| 89 | Modify code | 3d | 2015-04-08 | 2015-04-13 | 88 | Testerzy |
| 90 | Re-test modified code | 2d | 2015-04-13 | 2015-04-15 | 89 | Testerzy |
| 91 | Unit testing complete | 0d | 2015-04-15 | 2015-04-15 | 90 |  |
| 92 | **Testy integracyjne** | 12d | 2015-04-15 | 2015-05-01 |  |  |
| 93 | Test module integration | 5d | 2015-04-15 | 2015-04-22 | 91 | Testerzy |
| 94 | Identify anomalies to specifications | 2d | 2015-04-22 | 2015-04-24 | 93 | Testerzy |
| 95 | Modify code | 3d | 2015-04-24 | 2015-04-29 | 94 | Testerzy |
| 96 | Re-test modified code | 2d | 2015-04-29 | 2015-05-01 | 95 | Testerzy |
| 97 | Integration testing complete | 0d | 2015-05-01 | 2015-05-01 | 96 |  |
| 98 | **Dokumentacja** | 88d | 2014-12-04 | 2015-04-07 |  |  |
| 99 | **Dokumentacja** | 88d | 2014-12-04 | 2015-04-07 |  |  |
| 100 | Develop Help specification | 1d | 2015-02-24 | 2015-02-24 | 74 | Pomoc/Helpdesk |
| 101 | Develop Help system | 3w | 2015-03-10 | 2015-03-31 | 79FS-5%, 100 | Pomoc/Helpdesk |
| 102 | Review Help documentation | 3d | 2015-03-31 | 2015-04-03 | 101 | Pomoc/Helpdesk |
| 103 | Incorporate Help documentation feedback | 2d | 2015-04-03 | 2015-04-07 | 102 | Pomoc/Helpdesk |
| 104 | Develop user manuals specifications | 2d | 2014-12-04 | 2014-12-08 | 18 | Pomoc/Helpdesk |
| 105 | Develop user manuals | 3w | 2015-03-10 | 2015-03-31 | 79FS-5%, 104 | Pomoc/Helpdesk |
| 106 | Review all user documentation | 2d | 2015-03-31 | 2015-04-02 | 105 | Pomoc/Helpdesk |
| 107 | Incorporate user documentation feedback | 2d | 2015-04-02 | 2015-04-06 | 106 | Pomoc/Helpdesk |
| 108 | Documentation complete | 0d | 2015-04-07 | 2015-04-07 | 103, 107 |  |
| 109 | Develop Help specification | 1d | 2015-02-24 | 2015-02-24 | 74 | Pomoc/Helpdesk |
| 110 | Develop Help system | 3w | 2015-03-10 | 2015-03-31 | 79FS-5%, 109 | Pomoc/Helpdesk |
| 111 | Review Help documentation | 3d | 2015-03-31 | 2015-04-03 | 110 | Pomoc/Helpdesk |
| 112 | Incorporate Help documentation feedback | 2d | 2015-04-03 | 2015-04-07 | 111 | Pomoc/Helpdesk |
| 113 | Develop user manuals specifications | 2d | 2015-02-24 | 2015-02-25 | 74 | Pomoc/Helpdesk |
| 114 | Develop user manuals | 3w | 2015-03-10 | 2015-03-31 | 79FS-5%, 113 | Pomoc/Helpdesk |
| 115 | Review all user documentation | 2d | 2015-03-31 | 2015-04-02 | 114 | Pomoc/Helpdesk |
| 116 | Incorporate user documentation feedback | 2d | 2015-04-02 | 2015-04-06 | 115 | Pomoc/Helpdesk |
| 117 | Documentation complete | 0d | 2015-04-07 | 2015-04-07 | 112, 116 |  |
| 118 | **Deployment** | 5d | 2014-10-27 | 2014-10-31 |  |  |
| 119 | Determine final deployment strategy | 1d | 2014-10-27 | 2014-10-27 |  | Deployment |
| 120 | Develop deployment methodology | 1d | 2014-10-28 | 2014-10-28 | 119 | Deployment |
| 121 | Secure deployment resources | 1d | 2014-10-29 | 2014-10-29 | 120 | Deployment |
| 122 | Train support staff | 1d | 2014-10-30 | 2014-10-30 | 121 | Deployment |
| 123 | Deploy software | 1d | 2014-10-31 | 2014-10-31 | 122 | Deployment |
| 124 | Deployment complete | 0d | 2014-10-31 | 2014-10-31 | 123 |  |

Removed: 1 Scope; 2 Determine project scope; 3 Secure project sponsorship; 4 Define preliminary resources; 5 Secure core resources; 6 Scope complete; 48 Training; 49 Develop training specifications for end users; 50 Develop training specifications for helpdesk support staff; 51 Identify training delivery methodology (computer based training, classroom, etc.); 52 Develop training materials; 53 Conduct training usability study; 54 Finalize training materials; 55 Develop training delivery mechanism; 56 Training materials complete; 67 Pilot; 68 Identify test group; 69 Develop software delivery mechanism; 70 Install/deploy software; 71 Obtain user feedback; 72 Evaluate testing information; 73 Pilot complete

Changed:

| ID | Task | Start | Finish | Duration | Total float | Predecessors | Other |
| --- | --- | --- | --- | --- | --- | --- | --- |
| 1 | **Analiza, ustalenie wymagań** | 2000-01-06 → 2014-10-27 (+5408d) | 2000-01-26 → 2014-11-14 (+5406d) | 14d → 15d | 0d → none |  | was named Analysis/Software Requirements |
| 2 | Conduct needs analysis | 2000-01-06 → 2014-10-27 (+5408d) | 2000-01-13 → 2014-10-31 (+5405d) |  | 0d → 1d | Scope complete → none | resources Analyst → Analityk |
| 3 | Draft preliminary software specifications | 2000-01-13 → 2014-11-03 (+5408d) | 2000-01-18 → 2014-11-05 (+5405d) |  | 0d → 1d |  | resources Analyst → Analityk |
| 4 | Develop preliminary budget | 2000-01-18 → 2014-11-06 (+5406d) | 2000-01-20 → 2014-11-07 (+5405d) |  | 0d → 1d |  |  |
| 5 | Review software specifications/budget with team | 2000-01-20 → 2014-11-10 (+5408d) | 2000-01-20 → 2014-11-10 (+5408d) |  | 0d → 1d |  | resources Project Manager; Analyst → Project Manager; Analityk |
| 6 | Incorporate feedback on software specifications | 2000-01-21 → 2014-11-10 (+5407d) | 2000-01-21 → 2014-11-11 (+5408d) |  | 0d → 1d |  | resources Analyst → Analityk |
| 7 | Develop delivery timeline | 2000-01-24 → 2014-11-11 (+5405d) | 2000-01-24 → 2014-11-12 (+5406d) |  | 0d → 1d |  |  |
| 8 | Obtain approvals to proceed (concept, timeline, budget) | 2000-01-25 → 2014-11-12 (+5405d) | 2000-01-25 → 2014-11-12 (+5405d) |  | 0d → 1d |  | resources Management; Project Manager → Kadra zarządzająca; Project Manager |
| 9 | Secure required resources | 2000-01-25 → 2014-11-13 (+5406d) | 2000-01-26 → 2014-11-13 (+5405d) |  | 0d → 1d |  |  |
| 10 | Analysis complete | 2000-01-26 → 2014-11-13 (+5405d) | 2000-01-26 → 2014-11-13 (+5405d) |  | 0d → 1d |  |  |
| 11 | **Projektowanie** | 2000-01-26 → 2014-11-14 (+5406d) | 2000-02-15 → 2014-12-04 (+5406d) |  | 0d → 57.5d |  | was named Design |
| 12 | Review preliminary software specifications | 2000-01-26 → 2014-11-14 (+5406d) | 2000-01-28 → 2014-11-17 (+5407d) |  | 0d → 54.5d |  | resources Analyst → Analityk |
| 13 | Develop functional specifications | 2000-01-28 → 2014-11-18 (+5408d) | 2000-02-04 → 2014-11-24 (+5407d) |  | 0d → 54.5d |  | resources Analyst → Analityk |
| 14 | Develop prototype based on functional specifications | 2000-02-04 → 2014-11-25 (+5408d) | 2000-02-10 → 2014-11-28 (+5405d) |  | 0d → 54.5d |  | resources Analyst → Analityk |
| 15 | Review functional specifications | 2000-02-10 → 2014-12-01 (+5408d) | 2000-02-14 → 2014-12-02 (+5405d) |  | 0d → 54.5d |  | resources Management → Kadra zarządzająca |
| 16 | Incorporate feedback into functional specifications | 2000-02-14 → 2014-12-03 (+5406d) | 2000-02-15 → 2014-12-03 (+5405d) |  | 0d → 54.5d |  | resources Management → Kadra zarządzająca |
| 17 | Obtain approval to proceed | 2000-02-15 → 2014-12-04 (+5406d) | 2000-02-15 → 2014-12-04 (+5406d) |  | 0d → 54.5d |  | resources Management; Project Manager → Kadra zarządzająca; Project Manager |
| 18 | Design complete | 2000-02-15 → 2014-12-04 (+5406d) | 2000-02-15 → 2014-12-04 (+5406d) |  | 0d → 54.5d |  |  |
| 19 | **Implemementacja** | 2000-02-16 → 2014-12-04 (+5405d) | 2000-03-16 → 2015-01-05 (+5408d) |  | 0d → 57.5d |  | was named Development |
| 20 | Review functional specifications | 2000-02-16 → 2014-12-04 (+5405d) | 2000-02-16 → 2014-12-05 (+5406d) |  | 0d → 57.5d |  | resources Developer → Deweloper |
| 21 | Identify modular/tiered design parameters | 2000-02-17 → 2014-12-05 (+5405d) | 2000-02-17 → 2014-12-08 (+5408d) |  | 0d → 57.5d |  | resources Developer → Deweloper |
| 22 | Assign development staff | 2000-02-18 → 2014-12-08 (+5407d) | 2000-02-18 → 2014-12-09 (+5408d) |  | 0d → 57.5d |  | resources Developer → Deweloper |
| 23 | Develop code | 2000-02-21 → 2014-12-09 (+5405d) | 2000-03-10 → 2014-12-30 (+5408d) |  | 0d → 57.5d |  | resources Developer → Deweloper |
| 24 | Developer testing (primary debugging) | 2000-02-24 → 2014-12-15 (+5408d) | 2000-03-16 → 2015-01-05 (+5408d) |  | 0d → 57.5d |  | resources Developer → Deweloper |
| 25 | Development complete | 2000-03-16 → 2015-01-05 (+5408d) | 2000-03-16 → 2015-01-05 (+5408d) |  | 0d → 57.5d |  |  |
| 26 | **Testowanie** | 2000-02-16 → 2014-12-04 (+5405d) | 2000-04-24 → 2015-02-11 (+5406d) |  | 15d → 57.5d |  | was named Testing |
| 27 | Develop unit test plans using product specifications | 2000-02-16 → 2014-12-04 (+5405d) | 2000-02-21 → 2014-12-10 (+5406d) |  | 17.75d → 75.25d |  | resources Testers → Testerzy |
| 28 | Develop integration test plans using product specifications | 2000-02-16 → 2014-12-04 (+5405d) | 2000-02-21 → 2014-12-10 (+5406d) |  | 59.75d → 102.25d |  | resources Testers → Testerzy |
| 29 | **Testy jednostkowe** | 2000-03-16 → 2015-01-05 (+5408d) | 2000-04-06 → 2015-01-26 (+5408d) |  | 0d → 57.5d |  | was named Unit Testing |
| 30 | Review modular code | 2000-03-16 → 2015-01-05 (+5408d) | 2000-03-23 → 2015-01-12 (+5408d) |  | 0d → 57.5d |  | resources Testers → Testerzy |
| 31 | Test component modules to product specifications | 2000-03-23 → 2015-01-12 (+5408d) | 2000-03-27 → 2015-01-14 (+5406d) |  | 0d → 57.5d |  | resources Testers → Testerzy |
| 32 | Identify anomalies to product specifications | 2000-03-27 → 2015-01-14 (+5406d) | 2000-03-30 → 2015-01-19 (+5408d) |  | 0d → 57.5d |  | resources Testers → Testerzy |
| 33 | Modify code | 2000-03-30 → 2015-01-19 (+5408d) | 2000-04-04 → 2015-01-22 (+5406d) |  | 0d → 57.5d |  | resources Testers → Testerzy |
| 34 | Re-test modified code | 2000-04-04 → 2015-01-22 (+5406d) | 2000-04-06 → 2015-01-26 (+5408d) |  | 0d → 57.5d |  | resources Testers → Testerzy |
| 35 | Unit testing complete | 2000-04-06 → 2015-01-26 (+5408d) | 2000-04-06 → 2015-01-26 (+5408d) |  | 0d → 57.5d |  |  |
| 36 | **Testy integracyjne** | 2000-04-06 → 2015-01-26 (+5408d) | 2000-04-24 → 2015-02-11 (+5406d) |  | 0d → 57.5d |  | was named Integration Testing |
| 37 | Test module integration | 2000-04-06 → 2015-01-26 (+5408d) | 2000-04-13 → 2015-02-02 (+5408d) |  | 0d → 57.5d |  | resources Testers → Testerzy |
| 38 | Identify anomalies to specifications | 2000-04-13 → 2015-02-02 (+5408d) | 2000-04-17 → 2015-02-04 (+5406d) |  | 0d → 57.5d |  | resources Testers → Testerzy |
| 39 | Modify code | 2000-04-17 → 2015-02-04 (+5406d) | 2000-04-20 → 2015-02-09 (+5408d) |  | 0d → 57.5d |  | resources Testers → Testerzy |
| 40 | Re-test modified code | 2000-04-20 → 2015-02-09 (+5408d) | 2000-04-24 → 2015-02-11 (+5406d) |  | 0d → 57.5d |  | resources Testers → Testerzy |
| 41 | Integration testing complete | 2000-04-24 → 2015-02-11 (+5406d) | 2000-04-24 → 2015-02-11 (+5406d) |  | 0d → 57.5d |  |  |
| 42 | **Dokumentacja** | 2000-02-16 → 2014-12-04 (+5405d) | 2000-03-29 → 2015-01-15 (+5405d) |  | 18.25d → 75.75d |  | was named Documentation |
| 53 | Develop Help specification | 2000-02-16 → 2014-12-04 (+5405d) | 2000-02-16 → 2014-12-05 (+5406d) |  | 27.75d → 85.25d |  | resources Technical Communicators → Pomoc/Helpdesk |
| 54 | Develop Help system | 2000-03-01 → 2014-12-19 (+5406d) | 2000-03-22 → 2015-01-08 (+5405d) |  | 18.25d → 75.75d |  | resources Technical Communicators → Pomoc/Helpdesk |
| 55 | Review Help documentation | 2000-03-22 → 2015-01-09 (+5406d) | 2000-03-27 → 2015-01-13 (+5405d) |  | 18.25d → 75.75d |  | resources Technical Communicators → Pomoc/Helpdesk |
| 56 | Incorporate Help documentation feedback | 2000-03-27 → 2015-01-14 (+5406d) | 2000-03-29 → 2015-01-15 (+5405d) |  | 18.25d → 75.75d |  | resources Technical Communicators → Pomoc/Helpdesk |
| 57 | Develop user manuals specifications | 2000-02-16 → 2014-12-04 (+5405d) | 2000-02-17 → 2014-12-08 (+5408d) |  | 27.75d → 85.25d |  | resources Technical Communicators → Pomoc/Helpdesk |
| 58 | Develop user manuals | 2000-03-01 → 2014-12-19 (+5406d) | 2000-03-22 → 2015-01-08 (+5405d) |  | 19.25d → 76.75d |  | resources Technical Communicators → Pomoc/Helpdesk |
| 59 | Review all user documentation | 2000-03-22 → 2015-01-09 (+5406d) | 2000-03-24 → 2015-01-12 (+5407d) |  | 19.25d → 76.75d |  | resources Technical Communicators → Pomoc/Helpdesk |
| 60 | Incorporate user documentation feedback | 2000-03-24 → 2015-01-13 (+5408d) | 2000-03-28 → 2015-01-14 (+5405d) |  | 19.25d → 76.75d |  | resources Technical Communicators → Pomoc/Helpdesk |
| 61 | Documentation complete | 2000-03-29 → 2015-01-15 (+5405d) | 2000-03-29 → 2015-01-15 (+5405d) |  | 18.25d → 75.75d |  |  |
| 62 | **Deployment** | 2000-05-03 → 2015-02-12 (+5398d) | 2000-05-10 → 2015-02-18 (+5397d) |  | 0d → none |  |  |
| 63 | Determine final deployment strategy | 2000-05-03 → 2015-02-12 (+5398d) | 2000-05-04 → 2015-02-12 (+5397d) |  | 0d → -35d | Pilot complete → none | resources Deployment Team → Deployment |
| 64 | Develop deployment methodology | 2000-05-04 → 2015-02-13 (+5398d) | 2000-05-05 → 2015-02-13 (+5397d) |  | 0d → -35d |  | resources Deployment Team → Deployment |
| 65 | Secure deployment resources | 2000-05-05 → 2015-02-16 (+5400d) | 2000-05-08 → 2015-02-16 (+5397d) |  | 0d → -35d |  | resources Deployment Team → Deployment |
| 66 | Train support staff | 2000-05-08 → 2015-02-17 (+5398d) | 2000-05-09 → 2015-02-17 (+5397d) |  | 0d → -35d |  | resources Deployment Team → Deployment |
| 67 | Deploy software | 2000-05-09 → 2015-02-18 (+5398d) | 2000-05-10 → 2015-02-18 (+5397d) |  | 0d → -35d |  | resources Deployment Team → Deployment |
| 68 | Deployment complete | 2000-05-10 → 2015-02-18 (+5397d) | 2000-05-10 → 2015-02-18 (+5397d) |  | 0d → -35d |  |  |
| 69 | **Post Implementation Review** | 2000-05-10 → 2015-02-19 (+5398d) | 2000-05-15 → 2015-02-23 (+5397d) |  |  |  |  |
| 70 | Document lessons learned | 2000-05-10 → 2015-02-19 (+5398d) | 2000-05-11 → 2015-02-19 (+5397d) |  | 0d → -35d | 68 → 68, 124 |  |
| 71 | Distribute to team members | 2000-05-11 → 2015-02-20 (+5398d) | 2000-05-12 → 2015-02-20 (+5397d) |  | 0d → -35d |  |  |
| 72 | Create software maintenance team | 2000-05-12 → 2015-02-23 (+5400d) | 2000-05-15 → 2015-02-23 (+5397d) |  | 0d → -35d |  |  |
| 73 | Post implementation review complete | 2000-05-15 → 2015-02-23 (+5397d) | 2000-05-15 → 2015-02-23 (+5397d) |  | 0d → -35d |  |  |
| 74 | Sprint 1 Complete | 2000-05-15 → 2015-02-23 (+5397d) | 2000-05-15 → 2015-02-23 (+5397d) |  | 0d → -35d |  | was named Software development template complete |

## Version 3 (saved 2014-10-26)

Note of the change: Main tasks order fixed.

Last finish 2015-05-01 → 2015-05-13 (+12d).

Changed:

| ID | Task | Start | Finish | Duration | Total float | Predecessors | Other |
| --- | --- | --- | --- | --- | --- | --- | --- |
| 19 | **Implemementacja** |  |  |  | 57.5d → 61d | none → 11 |  |
| 26 | **Testowanie** | 2014-12-04 → 2015-01-05 (+32d) | 2015-02-11 → 2015-02-17 (+6d) | 48.75d → 31d | 57.5d → 61d | none → 19 |  |
| 27 | Develop unit test plans using product specifications | 2014-12-04 → 2015-01-05 (+32d) | 2014-12-10 → 2015-01-09 (+30d) |  | 75.25d → 52d |  |  |
| 28 | Develop integration test plans using product specifications | 2014-12-04 → 2015-01-05 (+32d) | 2014-12-10 → 2015-01-09 (+30d) |  | 102.25d → 79d |  |  |
| 29 | **Testy jednostkowe** | 2015-01-05 → 2015-01-09 (+4d) | 2015-01-26 → 2015-01-30 (+4d) |  | 57.5d → 61d |  |  |
| 30 | Review modular code | 2015-01-05 → 2015-01-09 (+4d) | 2015-01-12 → 2015-01-16 (+4d) |  | 57.5d → 52d |  |  |
| 31 | Test component modules to product specifications | 2015-01-12 → 2015-01-16 (+4d) | 2015-01-14 → 2015-01-20 (+6d) |  | 57.5d → 52d |  |  |
| 32 | Identify anomalies to product specifications | 2015-01-14 → 2015-01-20 (+6d) | 2015-01-19 → 2015-01-23 (+4d) |  | 57.5d → 52d |  |  |
| 33 | Modify code | 2015-01-19 → 2015-01-23 (+4d) | 2015-01-22 → 2015-01-28 (+6d) |  | 57.5d → 52d |  |  |
| 34 | Re-test modified code | 2015-01-22 → 2015-01-28 (+6d) | 2015-01-26 → 2015-01-30 (+4d) |  | 57.5d → 52d |  |  |
| 35 | Unit testing complete | 2015-01-26 → 2015-01-30 (+4d) | 2015-01-26 → 2015-01-30 (+4d) |  | 57.5d → 52d |  |  |
| 36 | **Testy integracyjne** | 2015-01-26 → 2015-01-30 (+4d) | 2015-02-11 → 2015-02-17 (+6d) |  | 57.5d → 61d |  |  |
| 37 | Test module integration | 2015-01-26 → 2015-01-30 (+4d) | 2015-02-02 → 2015-02-06 (+4d) |  | 57.5d → 52d |  |  |
| 38 | Identify anomalies to specifications | 2015-02-02 → 2015-02-06 (+4d) | 2015-02-04 → 2015-02-10 (+6d) |  | 57.5d → 52d |  |  |
| 39 | Modify code | 2015-02-04 → 2015-02-10 (+6d) | 2015-02-09 → 2015-02-13 (+4d) |  | 57.5d → 52d |  |  |
| 40 | Re-test modified code | 2015-02-09 → 2015-02-13 (+4d) | 2015-02-11 → 2015-02-17 (+6d) |  | 57.5d → 52d |  |  |
| 41 | Integration testing complete | 2015-02-11 → 2015-02-17 (+6d) | 2015-02-11 → 2015-02-17 (+6d) |  | 57.5d → 52d |  |  |
| 42 | **Dokumentacja** |  |  |  | 75.75d → 83.25d | none → 11 |  |
| 75 | **Implemementacja** |  | 2015-03-25 → 2015-04-07 (+13d) | 21.75d → 30.75d |  |  |  |
| 77 | Identify modular/tiered design parameters |  | 2015-02-25 → 2015-03-04 (+7d) | 1d → 4d | -35d → 0d |  |  |
| 78 | Assign development staff | 2015-02-26 → 2015-03-05 (+7d) | 2015-02-26 → 2015-03-11 (+13d) | 1d → 4d |  |  | resources Deweloper → Deweloper [50%] |
| 79 | Develop code | 2015-02-27 → 2015-03-12 (+13d) | 2015-03-19 → 2015-04-01 (+13d) |  | -35d → 0d |  |  |
| 80 | Developer testing (primary debugging) | 2015-03-04 → 2015-03-17 (+13d) | 2015-03-25 → 2015-04-07 (+13d) |  |  |  |  |
| 81 | Development complete | 2015-03-25 → 2015-04-07 (+13d) | 2015-03-25 → 2015-04-07 (+13d) |  | -35d → 0d |  |  |
| 82 | **Testowanie** |  | 2015-05-01 → 2015-05-13 (+12d) | 48.75d → 56.25d |  |  |  |
| 85 | **Testy jednostkowe** | 2015-03-25 → 2015-04-07 (+13d) | 2015-04-15 → 2015-04-27 (+12d) | 15d → 13.5d |  |  |  |
| 86 | Review modular code | 2015-03-25 → 2015-04-07 (+13d) | 2015-04-01 → 2015-04-14 (+13d) |  | -12.5d → 0d |  |  |
| 87 | Test component modules to product specifications | 2015-04-01 → 2015-04-14 (+13d) | 2015-04-03 → 2015-04-16 (+13d) |  | -12.5d → 0d |  |  |
| 88 | Identify anomalies to product specifications | 2015-04-03 → 2015-04-16 (+13d) | 2015-04-08 → 2015-04-20 (+12d) | 3d → 1.5d | -12.5d → 0d |  | resources Testerzy → Testerzy; Deweloper |
| 89 | Modify code | 2015-04-08 → 2015-04-20 (+12d) | 2015-04-13 → 2015-04-23 (+10d) |  | -12.5d → 0d |  |  |
| 90 | Re-test modified code | 2015-04-13 → 2015-04-23 (+10d) | 2015-04-15 → 2015-04-27 (+12d) |  | -12.5d → 0d |  |  |
| 91 | Unit testing complete | 2015-04-15 → 2015-04-27 (+12d) | 2015-04-15 → 2015-04-27 (+12d) |  | -12.5d → 0d |  |  |
| 92 | **Testy integracyjne** | 2015-04-15 → 2015-04-27 (+12d) | 2015-05-01 → 2015-05-13 (+12d) |  |  |  |  |
| 93 | Test module integration | 2015-04-15 → 2015-04-27 (+12d) | 2015-04-22 → 2015-05-04 (+12d) |  | -12.5d → 0d |  |  |
| 94 | Identify anomalies to specifications | 2015-04-22 → 2015-05-04 (+12d) | 2015-04-24 → 2015-05-06 (+12d) |  | -12.5d → 0d |  |  |
| 95 | Modify code | 2015-04-24 → 2015-05-06 (+12d) | 2015-04-29 → 2015-05-11 (+12d) |  | -12.5d → 0d |  |  |
| 96 | Re-test modified code | 2015-04-29 → 2015-05-11 (+12d) | 2015-05-01 → 2015-05-13 (+12d) |  | -12.5d → 0d |  |  |
| 97 | Integration testing complete | 2015-05-01 → 2015-05-13 (+12d) | 2015-05-01 → 2015-05-13 (+12d) |  | -12.5d → 0d |  |  |
| 98 | **Dokumentacja** |  | 2015-04-07 → 2015-04-20 (+13d) | 88d → 97d | 18.25d → 16.75d |  |  |
| 99 | **Dokumentacja** |  | 2015-04-07 → 2015-04-20 (+13d) | 88d → 97d | 18.25d → 16.75d |  |  |
| 101 | Develop Help system | 2015-03-10 → 2015-03-23 (+13d) | 2015-03-31 → 2015-04-13 (+13d) |  | 18.25d → 16.75d |  |  |
| 102 | Review Help documentation | 2015-03-31 → 2015-04-13 (+13d) | 2015-04-03 → 2015-04-16 (+13d) |  | 18.25d → 16.75d |  |  |
| 103 | Incorporate Help documentation feedback | 2015-04-03 → 2015-04-16 (+13d) | 2015-04-07 → 2015-04-20 (+13d) |  | 18.25d → 16.75d |  |  |
| 105 | Develop user manuals | 2015-03-10 → 2015-03-23 (+13d) | 2015-03-31 → 2015-04-13 (+13d) |  | 19.25d → 17.75d |  |  |
| 106 | Review all user documentation | 2015-03-31 → 2015-04-13 (+13d) | 2015-04-02 → 2015-04-15 (+13d) |  | 19.25d → 17.75d |  |  |
| 107 | Incorporate user documentation feedback | 2015-04-02 → 2015-04-15 (+13d) | 2015-04-06 → 2015-04-17 (+11d) |  | 19.25d → 17.75d |  |  |
| 108 | Documentation complete | 2015-04-07 → 2015-04-20 (+13d) | 2015-04-07 → 2015-04-20 (+13d) |  | 18.25d → 16.75d |  |  |
| 110 | Develop Help system | 2015-03-10 → 2015-03-23 (+13d) | 2015-03-31 → 2015-04-13 (+13d) |  | 18.25d → 16.75d |  |  |
| 111 | Review Help documentation | 2015-03-31 → 2015-04-13 (+13d) | 2015-04-03 → 2015-04-16 (+13d) |  | 18.25d → 16.75d |  |  |
| 112 | Incorporate Help documentation feedback | 2015-04-03 → 2015-04-16 (+13d) | 2015-04-07 → 2015-04-20 (+13d) |  | 18.25d → 16.75d |  |  |
| 114 | Develop user manuals | 2015-03-10 → 2015-03-23 (+13d) | 2015-03-31 → 2015-04-13 (+13d) |  | 19.25d → 17.75d |  |  |
| 115 | Review all user documentation | 2015-03-31 → 2015-04-13 (+13d) | 2015-04-02 → 2015-04-15 (+13d) |  | 19.25d → 17.75d |  |  |
| 116 | Incorporate user documentation feedback | 2015-04-02 → 2015-04-15 (+13d) | 2015-04-06 → 2015-04-17 (+11d) |  | 19.25d → 17.75d |  |  |
| 117 | Documentation complete | 2015-04-07 → 2015-04-20 (+13d) | 2015-04-07 → 2015-04-20 (+13d) |  | 18.25d → 16.75d |  |  |

## Version 4 (saved 2014-10-27)

Note of the change: Partially removed overallocated resources. Translated names of activities in analysis and planning.

Last finish 2015-05-13 → 2015-05-18 (+5d). Complete tasks 0 → 1.

Removed: 3 Draft preliminary software specifications; 6 Incorporate feedback on software specifications; 9 Secure required resources; 100 Develop Help specification; 101 Develop Help system; 102 Review Help documentation; 103 Incorporate Help documentation feedback; 104 Develop user manuals specifications; 105 Develop user manuals; 106 Review all user documentation; 107 Incorporate user documentation feedback; 108 Documentation complete; 109 Develop Help specification

Changed:

| ID | Task | Start | Finish | Duration | Complete | Total float | Predecessors | Other |
| --- | --- | --- | --- | --- | --- | --- | --- | --- |
| 1 | **Analiza, ustalenie wymagań** | 2014-10-27 A |  |  | 0% → 56% |  |  |  |
| 2 | Przeprowadzenie analizy wymagań | 2014-10-27 A | 2014-10-31 A |  | 0% → 100% | 1d → none |  | was named Conduct needs analysis |
| 3 | Zapisanie wstępnego budżetu | 2014-11-06 → 2014-11-03 (-3d) | 2014-11-07 → 2014-11-04 (-3d) |  |  | 1d → 0d | Draft preliminary software specifications → 2 | was named Develop preliminary budget |
| 4 | Przeprowadzenie recencji budżetu/specyfikacji z resztą teamu | 2014-11-10 → 2014-11-05 (-5d) | 2014-11-10 → 2014-11-05 (-5d) |  |  | 1d → 0d |  | was named Review software specifications/budget with team |
| 5 | Zaplanowanie kalendarza wypuszczania wersji produktu | 2014-11-11 → 2014-11-05 (-6d) | 2014-11-12 → 2014-11-06 (-6d) |  |  | 1d → 0d | Incorporate feedback on software specifications → 4 | was named Develop delivery timeline |
| 6 | Zdobycie zgody na dalsze działania przy zaplanowanym budżecie, kalendarzu I specyfikacji | 2014-11-12 → 2014-11-06 (-6d) | 2014-11-12 → 2014-11-06 (-6d) |  |  | 1d → 0d |  | was named Obtain approvals to proceed (concept, timeline, budget) |
| 7 | Analiza zakończona | 2014-11-13 → 2014-11-06 (-7d) | 2014-11-13 → 2014-11-06 (-7d) |  |  | 1d → 0d | Secure required resources → 6 | was named Analysis complete |
| 8 | **Projektowanie** | 2014-11-14 → 2014-11-07 (-7d) | 2014-12-04 → 2014-11-27 (-7d) |  |  | 61d → 50.5d |  |  |
| 9 | Recenzja wstępnej specyfikacji oprogramowania | 2014-11-14 → 2014-11-07 (-7d) | 2014-11-17 → 2014-11-10 (-7d) |  |  | 52d → 50.5d |  | was named Review preliminary software specifications |
| 10 | Sporządzenie wymagań funkcjonalnych | 2014-11-18 → 2014-11-11 (-7d) | 2014-11-24 → 2014-11-17 (-7d) |  |  | 52d → 50.5d |  | was named Develop functional specifications |
| 11 | Sporządzenie prototypu na bazie wymagań funkcjonalnych | 2014-11-25 → 2014-11-18 (-7d) | 2014-11-28 → 2014-11-21 (-7d) |  |  | 52d → 50.5d |  | was named Develop prototype based on functional specifications |
| 12 | Recejzja wymagań funkcjonalnych | 2014-12-01 → 2014-11-24 (-7d) | 2014-12-02 → 2014-11-25 (-7d) |  |  | 52d → 50.5d |  | was named Review functional specifications |
| 13 | Korekty wymagań funkcjonalnych po spotkaniu z klientem | 2014-12-03 → 2014-11-26 (-7d) | 2014-12-03 → 2014-11-26 (-7d) |  |  | 52d → 50.5d |  | was named Incorporate feedback into functional specifications |
| 14 | Pozywkanie zezwolenia na dalsze prace | 2014-12-04 → 2014-11-27 (-7d) | 2014-12-04 → 2014-11-27 (-7d) |  |  | 52d → 50.5d |  | was named Obtain approval to proceed |
| 15 | Projektowanie zakończone | 2014-12-04 → 2014-11-27 (-7d) | 2014-12-04 → 2014-11-27 (-7d) |  |  | 54.5d → 50.5d |  | was named Design complete |
| 16 | **Implemementacja** | 2014-12-04 → 2014-11-27 (-7d) | 2015-01-05 → 2015-01-22 (+17d) | 21.75d → 40.5d |  | 61d → 50.5d |  |  |
| 17 | Review functional specifications | 2014-12-04 → 2014-11-27 (-7d) | 2014-12-05 → 2014-11-28 (-7d) |  |  | 61d → 50.5d |  |  |
| 18 | Identify modular/tiered design parameters | 2014-12-05 → 2014-11-28 (-7d) | 2014-12-08 → 2014-12-01 (-7d) |  |  | 61d → 50.5d |  |  |
| 19 | Assign development staff | 2014-12-08 → 2014-12-01 (-7d) | 2014-12-09 → 2014-12-02 (-7d) |  |  | 61d → 50.5d |  |  |
| 20 | Develop code | 2014-12-09 → 2014-12-02 (-7d) | 2014-12-30 → 2015-01-13 (+14d) | 15d → 30d |  | 61d → 50.5d |  | resources Deweloper → Deweloper [50%] |
| 21 | Developer testing (primary debugging) | 2014-12-15 → 2014-12-12 (-3d) | 2015-01-05 → 2015-01-22 (+17d) | 15d → 30d |  | 61d → 50.5d |  | resources Deweloper → Deweloper [50%] |
| 22 | Development complete | 2015-01-05 → 2015-01-22 (+17d) | 2015-01-05 → 2015-01-22 (+17d) |  |  | 57.5d → 50.5d |  |  |
| 23 | **Testowanie** | 2015-01-05 → 2015-01-23 (+18d) | 2015-02-17 → 2015-03-06 (+17d) |  |  | 61d → 50.5d |  |  |
| 24 | Develop unit test plans using product specifications | 2015-01-05 → 2015-01-23 (+18d) | 2015-01-09 → 2015-01-28 (+19d) |  |  | 52d → 50.5d |  |  |
| 25 | Develop integration test plans using product specifications | 2015-01-05 → 2015-01-23 (+18d) | 2015-01-09 → 2015-01-28 (+19d) |  |  | 79d → 77.5d |  |  |
| 26 | **Testy jednostkowe** | 2015-01-09 → 2015-01-29 (+20d) | 2015-01-30 → 2015-02-18 (+19d) |  |  | 61d → 50.5d |  |  |
| 27 | Review modular code | 2015-01-09 → 2015-01-29 (+20d) | 2015-01-16 → 2015-02-04 (+19d) |  |  | 52d → 50.5d |  |  |
| 28 | Test component modules to product specifications | 2015-01-16 → 2015-02-05 (+20d) | 2015-01-20 → 2015-02-06 (+17d) |  |  | 52d → 50.5d |  |  |
| 29 | Identify anomalies to product specifications | 2015-01-20 → 2015-02-09 (+20d) | 2015-01-23 → 2015-02-11 (+19d) |  |  | 52d → 50.5d |  |  |
| 30 | Modify code | 2015-01-23 → 2015-02-12 (+20d) | 2015-01-28 → 2015-02-16 (+19d) |  |  | 52d → 50.5d |  |  |
| 31 | Re-test modified code | 2015-01-28 → 2015-02-17 (+20d) | 2015-01-30 → 2015-02-18 (+19d) |  |  | 52d → 50.5d |  |  |
| 32 | Unit testing complete | 2015-01-30 → 2015-02-18 (+19d) | 2015-01-30 → 2015-02-18 (+19d) |  |  | 52d → 50.5d |  |  |
| 33 | **Testy integracyjne** | 2015-01-30 → 2015-02-19 (+20d) | 2015-02-17 → 2015-03-06 (+17d) |  |  | 61d → 50.5d |  |  |
| 34 | Test module integration | 2015-01-30 → 2015-02-19 (+20d) | 2015-02-06 → 2015-02-25 (+19d) |  |  | 52d → 50.5d |  |  |
| 35 | Identify anomalies to specifications | 2015-02-06 → 2015-02-26 (+20d) | 2015-02-10 → 2015-02-27 (+17d) |  |  | 52d → 50.5d |  |  |
| 36 | Modify code | 2015-02-10 → 2015-03-02 (+20d) | 2015-02-13 → 2015-03-04 (+19d) |  |  | 52d → 50.5d |  |  |
| 37 | Re-test modified code | 2015-02-13 → 2015-03-05 (+20d) | 2015-02-17 → 2015-03-06 (+17d) |  |  | 52d → 50.5d |  |  |
| 38 | Integration testing complete | 2015-02-17 → 2015-03-06 (+17d) | 2015-02-17 → 2015-03-06 (+17d) |  |  | 52d → 50.5d |  |  |
| 39 | **Dokumentacja** | 2014-12-04 → 2014-11-27 (-7d) | 2015-01-15 → 2015-01-20 (+5d) | 30.5d → 38d |  | 83.25d → 84d |  |  |
| 40 | **Dokumentacja** | 2014-12-04 → 2014-11-27 (-7d) | 2015-01-15 → 2015-01-20 (+5d) | 30.5d → 38d |  | 83.25d → 84d |  |  |
| 41 | Develop Help specification | 2014-12-04 → 2014-11-27 (-7d) | 2014-12-05 → 2014-11-28 (-7d) |  |  | 83.75d → 101d |  |  |
| 42 | Develop Help system | 2014-12-19 → 2014-12-23 (+4d) | 2015-01-08 → 2015-01-13 (+5d) |  |  | 75.75d → 84d |  |  |
| 43 | Review Help documentation | 2015-01-09 → 2015-01-13 (+4d) | 2015-01-13 → 2015-01-16 (+3d) |  |  | 74.25d → 84d |  |  |
| 44 | Incorporate Help documentation feedback | 2015-01-14 → 2015-01-16 (+2d) | 2015-01-15 → 2015-01-20 (+5d) |  |  | 74.25d → 84d |  |  |
| 45 | Develop user manuals specifications | 2014-12-04 → 2014-11-27 (-7d) | 2014-12-08 → 2014-12-01 (-7d) |  |  | 83.75d → 101d |  |  |
| 46 | Develop user manuals | 2014-12-19 → 2014-12-23 (+4d) | 2015-01-08 → 2015-01-13 (+5d) |  |  | 76.75d → 85d |  |  |
| 47 | Review all user documentation | 2015-01-09 → 2015-01-13 (+4d) | 2015-01-12 → 2015-01-15 (+3d) |  |  | 75.25d → 85d |  |  |
| 48 | Incorporate user documentation feedback | 2015-01-13 → 2015-01-15 (+2d) | 2015-01-14 → 2015-01-19 (+5d) |  |  | 75.25d → 85d |  |  |
| 49 | Documentation complete | 2015-01-15 → 2015-01-20 (+5d) | 2015-01-15 → 2015-01-20 (+5d) |  |  | 75.75d → 84d |  |  |
| 50 | Develop Help specification | 2014-12-04 → 2014-11-27 (-7d) | 2014-12-05 → 2014-11-28 (-7d) |  |  | 83.75d → 101d |  |  |
| 51 | Develop Help system | 2014-12-19 → 2014-12-23 (+4d) | 2015-01-08 → 2015-01-13 (+5d) |  |  | 75.75d → 84d |  |  |
| 52 | Review Help documentation | 2015-01-09 → 2015-01-13 (+4d) | 2015-01-13 → 2015-01-16 (+3d) |  |  | 74.25d → 84d |  |  |
| 53 | Incorporate Help documentation feedback | 2015-01-14 → 2015-01-16 (+2d) | 2015-01-15 → 2015-01-20 (+5d) |  |  | 74.25d → 84d |  |  |
| 54 | Develop user manuals specifications | 2014-12-04 → 2014-11-27 (-7d) | 2014-12-08 → 2014-12-01 (-7d) |  |  | 83.75d → 101d |  |  |
| 55 | Develop user manuals | 2014-12-19 → 2014-12-23 (+4d) | 2015-01-08 → 2015-01-13 (+5d) |  |  | 76.75d → 85d |  |  |
| 56 | Review all user documentation | 2015-01-09 → 2015-01-13 (+4d) | 2015-01-12 → 2015-01-15 (+3d) |  |  | 75.25d → 85d |  |  |
| 57 | Incorporate user documentation feedback | 2015-01-13 → 2015-01-15 (+2d) | 2015-01-14 → 2015-01-19 (+5d) |  |  | 75.25d → 85d |  |  |
| 58 | Documentation complete | 2015-01-15 → 2015-01-20 (+5d) | 2015-01-15 → 2015-01-20 (+5d) |  |  | 75.75d → 84d |  |  |
| 80 | Tworzenie planu testów jednostkowych |  | 2015-02-27 → 2015-03-05 (+6d) | 4d → 8d |  | 17.75d → 26d |  | was named Develop unit test plans using product specifications; resources Testerzy → Testerzy [50%] |
| 81 | Tworzenie planu testów czasu wykonania |  | 2015-02-27 → 2015-03-05 (+6d) | 4d → 8d |  | 43.25d → 51.5d |  | was named Develop integration test plans using product specifications; resources Testerzy → Testerzy [50%] |
| 95 | **Dokumentacja** | 2014-12-04 → 2014-10-27 (-38d) | 2015-04-20 → 2015-05-18 (+28d) | 97d → 145.5d |  | 16.75d → 0d |  |  |
| 96 | Dokumentacja | 2014-12-04 → 2014-10-27 (-38d) | 2015-04-20 → 2014-12-08 (-133d) | 97d → 30.5d |  | 16.75d → 115d |  |  |
| 97 | Develop Help system |  | 2015-04-13 → 2015-05-04 (+21d) | 3w → 6w |  | 16.75d → 0d | 76FS-5%, Develop Help specification → 76FS-5% | resources Pomoc/Helpdesk → Project Support [50%] |
| 98 | Review Help documentation | 2015-04-13 → 2015-05-04 (+21d) | 2015-04-16 → 2015-05-12 (+26d) | 3d → 6d |  | 16.75d → 0d |  | resources Pomoc/Helpdesk → Project Support [50%] |
| 99 | Incorporate Help documentation feedback | 2015-04-16 → 2015-05-12 (+26d) | 2015-04-20 → 2015-05-18 (+28d) | 2d → 4d |  | 16.75d → 0d |  | resources Pomoc/Helpdesk → Project Support [50%] |
| 104 | Documentation complete | 2015-04-20 → 2015-05-18 (+28d) | 2015-04-20 → 2015-05-18 (+28d) |  |  | 16.75d → 0d |  |  |

## Version 5 (saved 2014-10-27)

Note of the change: Deleted much stuff and translated what was left.

Last finish 2015-05-18 → 2015-05-08 (-10d).

Removed: 74 Identify modular/tiered design parameters; 108 Secure deployment resources

Changed:

| ID | Task | Start | Finish | Duration | Total float | Predecessors | Other |
| --- | --- | --- | --- | --- | --- | --- | --- |
| 72 | **Implemementacja** |  | 2015-04-07 → 2015-03-30 (-8d) | 30.75d → 24.75d |  |  |  |
| 73 | recenza wymagań funkcjolanych |  |  |  |  |  | was named Review functional specifications |
| 74 | Przydział załogi deweloperskiej | 2015-03-05 → 2015-02-25 (-8d) | 2015-03-11 → 2015-03-03 (-8d) |  |  | Identify modular/tiered design parameters → 73 | was named Assign development staff |
| 75 | Develeping (rozwijanie) aplikacji | 2015-03-12 → 2015-03-04 (-8d) | 2015-04-01 → 2015-03-24 (-8d) |  |  |  | was named Develop code |
| 76 | Debugowanie i rozwijanie testów | 2015-03-17 → 2015-03-09 (-8d) | 2015-04-07 → 2015-03-30 (-8d) |  |  |  | was named Developer testing (primary debugging) |
| 77 | Development zakończony | 2015-04-07 → 2015-03-30 (-8d) | 2015-04-07 → 2015-03-30 (-8d) |  |  |  | was named Development complete |
| 78 | **Testowanie** |  | 2015-05-13 → 2015-05-05 (-8d) | 56.25d → 50.25d |  |  |  |
| 81 | **Testy jednostkowe** | 2015-04-07 → 2015-03-30 (-8d) | 2015-04-27 → 2015-04-17 (-10d) |  |  |  |  |
| 82 | Code review | 2015-04-07 → 2015-03-30 (-8d) | 2015-04-14 → 2015-04-06 (-8d) |  |  |  | was named Review modular code |
| 83 | Testowanie kodu w odniesieniu do specyfikacji | 2015-04-14 → 2015-04-06 (-8d) | 2015-04-16 → 2015-04-08 (-8d) |  |  |  | was named Test component modules to product specifications |
| 84 | Identyfikacja niezgodności ze specyfikacją produktu | 2015-04-16 → 2015-04-08 (-8d) | 2015-04-20 → 2015-04-10 (-10d) |  |  |  | was named Identify anomalies to product specifications |
| 85 | Modyfikacje kodu | 2015-04-20 → 2015-04-10 (-10d) | 2015-04-23 → 2015-04-15 (-8d) |  |  |  | was named Modify code |
| 86 | Testowanie zmienionego kodu | 2015-04-23 → 2015-04-15 (-8d) | 2015-04-27 → 2015-04-17 (-10d) |  |  |  | was named Re-test modified code |
| 87 | Testowanie zakończone | 2015-04-27 → 2015-04-17 (-10d) | 2015-04-27 → 2015-04-17 (-10d) |  |  |  | was named Unit testing complete |
| 88 | **Testy integracyjne** | 2015-04-27 → 2015-04-17 (-10d) | 2015-05-13 → 2015-05-05 (-8d) |  |  |  |  |
| 89 | Testowanie zintegrowanych modułów | 2015-04-27 → 2015-04-17 (-10d) | 2015-05-04 → 2015-04-24 (-10d) |  |  |  | was named Test module integration |
| 90 | Identyfikacja anomalii w odniesieniu do specyfikacji produktu | 2015-05-04 → 2015-04-24 (-10d) | 2015-05-06 → 2015-04-28 (-8d) |  |  |  | was named Identify anomalies to specifications |
| 91 | Zmiany kodu | 2015-05-06 → 2015-04-28 (-8d) | 2015-05-11 → 2015-05-01 (-10d) |  |  |  | was named Modify code |
| 92 | Testowanie zmienionego kodu | 2015-05-11 → 2015-05-01 (-10d) | 2015-05-13 → 2015-05-05 (-8d) |  |  |  | was named Re-test modified code |
| 93 | Testowanie integracyjne zakończone | 2015-05-13 → 2015-05-05 (-8d) | 2015-05-13 → 2015-05-05 (-8d) |  |  |  | was named Integration testing complete |
| 94 | **Dokumentacja** |  | 2015-05-18 → 2015-05-08 (-10d) | 145.5d → 139.5d |  |  |  |
| 96 | Tworzenie systemu pomocy | 2015-03-23 → 2015-03-13 (-10d) | 2015-05-04 → 2015-04-24 (-10d) |  |  |  | was named Develop Help system |
| 97 | Recenzja dokumentacji supportowej | 2015-05-04 → 2015-04-24 (-10d) | 2015-05-12 → 2015-05-04 (-8d) |  |  |  | was named Review Help documentation |
| 98 | Właczenie wyników feedbacku do dokumentacji supportowej | 2015-05-12 → 2015-05-04 (-8d) | 2015-05-18 → 2015-05-08 (-10d) |  |  |  | was named Incorporate Help documentation feedback |
| 99 | Rozwijanie specyfikacji instrukcji użytkownika |  |  |  | 26.25d → 32.5d |  | was named Develop user manuals specifications |
| 100 | Rozwijanie instrukcji użytkownika | 2015-03-23 → 2015-03-13 (-10d) | 2015-04-13 → 2015-04-03 (-10d) |  |  |  | was named Develop user manuals |
| 101 | Recenzja dokumentacji użytkownika | 2015-04-13 → 2015-04-03 (-10d) | 2015-04-15 → 2015-04-07 (-8d) |  |  |  | was named Review all user documentation |
| 102 | Zmiana pod kątem feedback'u użytkownika | 2015-04-15 → 2015-04-07 (-8d) | 2015-04-17 → 2015-04-09 (-8d) |  |  |  | was named Incorporate user documentation feedback |
| 103 | Tworzenie dokumentacji zakończone | 2015-05-18 → 2015-05-08 (-10d) | 2015-05-18 → 2015-05-08 (-10d) |  |  |  | was named Documentation complete |
| 104 | **Deployment** |  | 2014-10-31 → 2014-10-30 (-1d) | 5d → 4d | 78d → 79d |  |  |
| 105 | Określenie ostatecznej strategii wdrażania |  |  |  | 43d → 79d |  | was named Determine final deployment strategy |
| 106 | Określenie metodologii wdrażania |  |  |  | 43d → 79d |  | was named Develop deployment methodology |
| 107 | Szkolenie teamu supportowego | 2014-10-30 → 2014-10-29 (-1d) | 2014-10-30 → 2014-10-29 (-1d) |  | 43d → 79d | Secure deployment resources → 106 | was named Train support staff |
| 108 | Wdrożenie | 2014-10-31 → 2014-10-30 (-1d) | 2014-10-31 → 2014-10-30 (-1d) |  | 43d → 79d |  | was named Deploy software |
| 109 | Wdrożenie ukończone | 2014-10-31 → 2014-10-30 (-1d) | 2014-10-31 → 2014-10-30 (-1d) |  | 43d → 79d |  | was named Deployment complete |

## Version 6 (saved 2014-11-03)

Note of the change: Resources

Last finish 2015-05-08 → 2015-07-03 (+56d).

Changed:

| ID | Task | Start | Finish | Duration | Total float | Other |
| --- | --- | --- | --- | --- | --- | --- |
| 16 | **Implemementacja** |  | 2015-01-22 → 2015-03-02 (+39d) | 40.5d → 67d | 44.5d → 54.5d |  |
| 21 | Developer testing (primary debugging) | 2014-12-12 → 2015-01-13 (+32d) | 2015-01-22 → 2015-03-02 (+39d) |  | 50.5d → 58.5d |  |
| 22 | Development complete | 2015-01-22 → 2015-03-02 (+39d) | 2015-01-22 → 2015-03-02 (+39d) |  | 50.5d → 58.5d |  |
| 23 | **Testowanie** | 2015-01-23 → 2015-03-02 (+38d) | 2015-03-06 → 2015-04-24 (+49d) | 31d → 39.5d | 44.5d → 50d |  |
| 24 | Develop unit test plans using product specifications | 2015-01-23 → 2015-03-09 (+45d) | 2015-01-28 → 2015-03-12 (+43d) |  | 50.5d → 50d |  |
| 25 | Develop integration test plans using product specifications | 2015-01-23 → 2015-03-02 (+38d) | 2015-01-28 → 2015-03-06 (+37d) |  | 77.5d → 85.5d |  |
| 26 | **Testy jednostkowe** | 2015-01-29 → 2015-03-13 (+43d) | 2015-02-18 → 2015-04-03 (+44d) | 15d → 16d | 44.5d → 50d |  |
| 27 | Review modular code | 2015-01-29 → 2015-03-13 (+43d) | 2015-02-04 → 2015-03-20 (+44d) |  | 50.5d → 50d |  |
| 28 | Test component modules to product specifications | 2015-02-05 → 2015-03-23 (+46d) | 2015-02-06 → 2015-03-24 (+46d) |  | 50.5d → 50d |  |
| 29 | Identify anomalies to product specifications | 2015-02-09 → 2015-03-25 (+44d) | 2015-02-11 → 2015-03-27 (+44d) |  | 50.5d → 50d |  |
| 30 | Modify code | 2015-02-12 → 2015-03-30 (+46d) | 2015-02-16 → 2015-04-01 (+44d) |  | 50.5d → 50d |  |
| 31 | Re-test modified code | 2015-02-17 → 2015-04-02 (+44d) | 2015-02-18 → 2015-04-03 (+44d) |  | 50.5d → 50d |  |
| 32 | Unit testing complete | 2015-02-18 → 2015-04-03 (+44d) | 2015-02-18 → 2015-04-03 (+44d) |  | 50.5d → 50d |  |
| 33 | **Testy integracyjne** | 2015-02-19 → 2015-04-06 (+46d) | 2015-03-06 → 2015-04-24 (+49d) | 12d → 15d | 44.5d → 50d |  |
| 34 | Test module integration | 2015-02-19 → 2015-04-06 (+46d) | 2015-02-25 → 2015-04-10 (+44d) |  | 50.5d → 50d |  |
| 35 | Identify anomalies to specifications | 2015-02-26 → 2015-04-13 (+46d) | 2015-02-27 → 2015-04-17 (+49d) |  | 50.5d → 50d |  |
| 36 | Modify code | 2015-03-02 → 2015-04-20 (+49d) | 2015-03-04 → 2015-04-22 (+49d) |  | 50.5d → 50d |  |
| 37 | Re-test modified code | 2015-03-05 → 2015-04-23 (+49d) | 2015-03-06 → 2015-04-24 (+49d) |  | 50.5d → 50d |  |
| 38 | Integration testing complete | 2015-03-06 → 2015-04-24 (+49d) | 2015-03-06 → 2015-04-24 (+49d) |  | 50.5d → 50d |  |
| 39 | **Dokumentacja** |  | 2015-01-20 → 2015-02-13 (+24d) | 38d → 56.5d | 78d → 100d |  |
| 40 | **Dokumentacja** |  | 2015-01-20 → 2015-02-13 (+24d) | 38d → 56.5d | 78d → 100d |  |
| 42 | Develop Help system |  | 2015-01-13 → 2015-02-06 (+24d) |  | 84d → 100d |  |
| 43 | Review Help documentation | 2015-01-13 → 2015-02-09 (+27d) | 2015-01-16 → 2015-02-11 (+26d) |  | 84d → 100d |  |
| 44 | Incorporate Help documentation feedback | 2015-01-16 → 2015-02-12 (+27d) | 2015-01-20 → 2015-02-13 (+24d) |  | 84d → 100d |  |
| 49 | Documentation complete | 2015-01-20 → 2015-02-13 (+24d) | 2015-01-20 → 2015-02-13 (+24d) |  | 84d → 100d |  |
| 72 | **Implemementacja** |  | 2015-03-30 → 2015-05-27 (+58d) | 24.75d → 67d |  |  |
| 73 | recenza wymagań funkcjolanych |  | 2015-02-24 → 2015-02-25 (+1d) | 1d → 2d |  | resources Deweloper → Deweloper [50%] |
| 74 | Przydział załogi deweloperskiej | 2015-02-25 → 2015-02-26 (+1d) | 2015-03-03 → 2015-03-04 (+1d) |  |  |  |
| 75 | Develeping (rozwijanie) aplikacji | 2015-03-04 → 2015-03-05 (+1d) | 2015-03-24 → 2015-04-15 (+22d) | 15d → 30d |  | resources Deweloper → Deweloper [50%] |
| 76 | Debugowanie i rozwijanie testów | 2015-03-09 → 2015-04-16 (+38d) | 2015-03-30 → 2015-05-27 (+58d) | 15d → 30d | 3.25d → 0d | resources Deweloper → Deweloper [50%] |
| 77 | Development zakończony | 2015-03-30 → 2015-05-27 (+58d) | 2015-03-30 → 2015-05-27 (+58d) |  | 3.25d → 0d |  |
| 78 | **Testowanie** |  | 2015-05-05 → 2015-07-03 (+59d) | 50.25d → 94d | 3.25d → 0d |  |
| 79 | Tworzenie planu testów jednostkowych |  | 2015-03-05 → 2015-04-16 (+42d) |  | 26d → 29.5d |  |
| 80 | Tworzenie planu testów czasu wykonania |  | 2015-03-05 → 2015-04-17 (+43d) |  | 51.5d → 55.5d |  |
| 81 | **Testy jednostkowe** | 2015-03-30 → 2015-05-28 (+59d) | 2015-04-17 → 2015-06-17 (+61d) | 13.5d → 15d | 3.25d → 0d |  |
| 82 | Code review | 2015-03-30 → 2015-05-28 (+59d) | 2015-04-06 → 2015-06-03 (+58d) |  | 3.25d → 0d |  |
| 83 | Testowanie kodu w odniesieniu do specyfikacji | 2015-04-06 → 2015-06-04 (+59d) | 2015-04-08 → 2015-06-05 (+58d) |  | 3.25d → 0d |  |
| 84 | Identyfikacja niezgodności ze specyfikacją produktu | 2015-04-08 → 2015-06-08 (+61d) | 2015-04-10 → 2015-06-10 (+61d) | 1.5d → 3d | 3.25d → 0d | resources Testerzy; Deweloper → Testerzy; Deweloper [50%] |
| 85 | Modyfikacje kodu | 2015-04-10 → 2015-06-11 (+62d) | 2015-04-15 → 2015-06-15 (+61d) |  | 3.25d → 0d |  |
| 86 | Testowanie zmienionego kodu | 2015-04-15 → 2015-06-16 (+62d) | 2015-04-17 → 2015-06-17 (+61d) |  | 3.25d → 0d |  |
| 87 | Testowanie zakończone | 2015-04-17 → 2015-06-17 (+61d) | 2015-04-17 → 2015-06-17 (+61d) |  | 3.25d → 0d |  |
| 88 | **Testy integracyjne** | 2015-04-17 → 2015-06-18 (+62d) | 2015-05-05 → 2015-07-03 (+59d) |  | 3.25d → 0d |  |
| 89 | Testowanie zintegrowanych modułów | 2015-04-17 → 2015-06-18 (+62d) | 2015-04-24 → 2015-06-24 (+61d) |  | 3.25d → 0d |  |
| 90 | Identyfikacja anomalii w odniesieniu do specyfikacji produktu | 2015-04-24 → 2015-06-25 (+62d) | 2015-04-28 → 2015-06-26 (+59d) |  | 3.25d → 0d |  |
| 91 | Zmiany kodu | 2015-04-28 → 2015-06-29 (+62d) | 2015-05-01 → 2015-07-01 (+61d) |  | 3.25d → 0d |  |
| 92 | Testowanie zmienionego kodu | 2015-05-01 → 2015-07-02 (+62d) | 2015-05-05 → 2015-07-03 (+59d) |  | 3.25d → 0d |  |
| 93 | Testowanie integracyjne zakończone | 2015-05-05 → 2015-07-03 (+59d) | 2015-05-05 → 2015-07-03 (+59d) |  | 3.25d → 0d |  |
| 94 | **Dokumentacja** |  | 2015-05-08 → 2015-05-20 (+12d) | 139.5d → 148d | 0d → 32d |  |
| 96 | Tworzenie systemu pomocy | 2015-03-13 → 2015-03-26 (+13d) | 2015-04-24 → 2015-05-06 (+12d) |  | 0d → 32d |  |
| 97 | Recenzja dokumentacji supportowej | 2015-04-24 → 2015-05-07 (+13d) | 2015-05-04 → 2015-05-14 (+10d) |  | 0d → 32d |  |
| 98 | Właczenie wyników feedbacku do dokumentacji supportowej | 2015-05-04 → 2015-05-15 (+11d) | 2015-05-08 → 2015-05-20 (+12d) |  | 0d → 32d |  |
| 100 | Rozwijanie instrukcji użytkownika | 2015-03-13 → 2015-03-26 (+13d) | 2015-04-03 → 2015-04-15 (+12d) |  | 21d → 53d |  |
| 101 | Recenzja dokumentacji użytkownika | 2015-04-03 → 2015-04-16 (+13d) | 2015-04-07 → 2015-04-17 (+10d) |  | 21d → 53d |  |
| 102 | Zmiana pod kątem feedback'u użytkownika | 2015-04-07 → 2015-04-20 (+13d) | 2015-04-09 → 2015-04-21 (+12d) |  | 21d → 53d |  |
| 103 | Tworzenie dokumentacji zakończone | 2015-05-08 → 2015-05-20 (+12d) | 2015-05-08 → 2015-05-20 (+12d) |  | 0d → 32d |  |

## Version 7 (saved 2014-11-03)

Note of the change: Version from lab - dependencies between tasks are fixed.

Last finish 2015-07-03 → 2015-03-30 (-95d).

Removed: 16 Implemementacja; 17 Review functional specifications; 18 Identify modular/tiered design parameters; 19 Assign development staff; 20 Develop code; 21 Developer testing (primary debugging); 22 Development complete; 23 Testowanie; 24 Develop unit test plans using product specifications; 25 Develop integration test plans using product specifications; 26 Testy jednostkowe; 27 Review modular code; 28 Test component modules to product specifications; 29 Identify anomalies to product specifications; 30 Modify code; 31 Re-test modified code; 32 Unit testing complete; 33 Testy integracyjne; 34 Test module integration; 35 Identify anomalies to specifications; 36 Modify code; 37 Re-test modified code; 38 Integration testing complete; 39 Dokumentacja; 40 Dokumentacja; 41 Develop Help specification; 42 Develop Help system; 43 Review Help documentation; 44 Incorporate Help documentation feedback; 45 Develop user manuals specifications; 46 Develop user manuals; 47 Review all user documentation; 48 Incorporate user documentation feedback; 49 Documentation complete; 50 Develop Help specification; 51 Develop Help system; 52 Review Help documentation; 53 Incorporate Help documentation feedback; 54 Develop user manuals specifications; 55 Develop user manuals; 56 Review all user documentation; 57 Incorporate user documentation feedback; 58 Documentation complete; 59 Deployment; 60 Determine final deployment strategy; 61 Develop deployment methodology; 62 Secure deployment resources; 63 Train support staff; 64 Deploy software; 65 Deployment complete; 66 Post Implementation Review; 67 Document lessons learned; 68 Distribute to team members; 69 Create software maintenance team; 70 Post implementation review complete; 71 Sprint 1 Complete

Changed:

| ID | Task | Start | Finish | Duration | Total float | Predecessors | Other |
| --- | --- | --- | --- | --- | --- | --- | --- |
| 1 | **Analiza, ustalenie wymagań** |  | 2014-11-14 → 2014-11-06 (-8d) | 15d → 9d | none → 0d |  | baseline start none → 2014-10-27; baseline finish none → 2014-11-14 |
| 2 | Przeprowadzenie analizy wymagań |  |  |  |  |  | baseline start none → 2014-10-27; baseline finish none → 2014-10-31 |
| 3 | Zapisanie wstępnego budżetu |  |  |  |  |  | baseline start none → 2014-11-03; baseline finish none → 2014-11-04 |
| 4 | Przeprowadzenie recencji budżetu/specyfikacji z resztą teamu |  |  |  |  |  | baseline start none → 2014-11-05; baseline finish none → 2014-11-05 |
| 5 | Zaplanowanie kalendarza wypuszczania wersji produktu |  |  |  |  |  | baseline start none → 2014-11-05; baseline finish none → 2014-11-06 |
| 6 | Zdobycie zgody na dalsze działania przy zaplanowanym budżecie, kalendarzu I specyfikacji |  |  |  |  |  | baseline start none → 2014-11-06; baseline finish none → 2014-11-06 |
| 7 | Analiza zakończona |  |  |  |  |  | baseline start none → 2014-11-06; baseline finish none → 2014-11-06 |
| 8 | **Projektowanie** |  |  |  | 55d → 15.75d |  | baseline start none → 2014-11-07; baseline finish none → 2014-11-27 |
| 9 | Recenzja wstępnej specyfikacji oprogramowania |  |  |  | 59d → 15.75d |  | baseline start none → 2014-11-07; baseline finish none → 2014-11-10 |
| 10 | Sporządzenie wymagań funkcjonalnych |  |  |  | 59d → 15.75d |  | baseline start none → 2014-11-11; baseline finish none → 2014-11-17 |
| 11 | Sporządzenie prototypu na bazie wymagań funkcjonalnych |  |  |  | 59d → 15.75d |  | baseline start none → 2014-11-18; baseline finish none → 2014-11-21 |
| 12 | Recejzja wymagań funkcjonalnych |  |  |  | 59d → 15.75d |  | baseline start none → 2014-11-24; baseline finish none → 2014-11-25 |
| 13 | Korekty wymagań funkcjonalnych po spotkaniu z klientem |  |  |  | 59d → 15.75d |  | baseline start none → 2014-11-26; baseline finish none → 2014-11-26 |
| 14 | Pozywkanie zezwolenia na dalsze prace |  |  |  | 59d → 15.75d |  | baseline start none → 2014-11-27; baseline finish none → 2014-11-27 |
| 15 | Projektowanie zakończone |  |  |  | 59d → 15.75d |  | baseline start none → 2014-11-27; baseline finish none → 2014-11-27 |
| 16 | **Implemementacja** | 2015-02-24 → 2014-10-27 (-120d) | 2015-05-27 → 2014-12-26 (-152d) | 67d → 45d |  |  | baseline start none → 2015-02-24; baseline finish none → 2015-05-27 |
| 17 | recenza wymagań funkcjolanych | 2015-02-24 → 2014-10-27 (-120d) | 2015-02-25 → 2014-10-27 (-121d) | 2d → 1d |  | Sprint 1 Complete → none | resources Deweloper [50%] → Deweloper; baseline start none → 2015-02-24; baseline finish none → 2015-02-25 |
| 18 | Przydział załogi deweloperskiej | 2015-02-26 → 2014-10-28 (-121d) | 2015-03-04 → 2014-10-30 (-125d) | 4d → 2d |  |  | resources Deweloper [50%] → Deweloper; baseline start none → 2015-02-26; baseline finish none → 2015-03-04 |
| 19 | Develeping (rozwijanie) aplikacji | 2015-03-05 → 2014-10-31 (-125d) | 2015-04-15 → 2014-11-20 (-146d) | 30d → 15d |  |  | resources Deweloper [50%] → Deweloper; baseline start none → 2015-03-05; baseline finish none → 2015-04-15 |
| 20 | Debugowanie i rozwijanie testów | 2015-04-16 → 2014-12-08 (-129d) | 2015-05-27 → 2014-12-26 (-152d) | 30d → 15d |  |  | resources Deweloper [50%] → Deweloper; baseline start none → 2015-04-16; baseline finish none → 2015-05-27 |
| 21 | Development zakończony | 2015-05-27 → 2014-12-26 (-152d) | 2015-05-27 → 2014-12-26 (-152d) |  |  |  | baseline start none → 2015-05-27; baseline finish none → 2015-05-27 |
| 22 | **Testowanie** | 2015-02-24 → 2014-11-27 (-89d) | 2015-07-03 → 2015-02-02 (-151d) | 94d → 47d |  | none → 8 | baseline start none → 2015-02-24; baseline finish none → 2015-07-03 |
| 23 | Tworzenie planu testów jednostkowych | 2015-02-24 → 2014-11-27 (-89d) | 2015-04-16 → 2014-12-05 (-132d) | 8d → 4d | 29.5d → 15.75d | Sprint 1 Complete → none | resources Testerzy [50%] → Testerzy; baseline start none → 2015-02-24; baseline finish none → 2015-04-16 |
| 24 | Tworzenie planu testów czasu wykonania | 2015-02-24 → 2014-11-27 (-89d) | 2015-04-17 → 2014-12-08 (-130d) | 8d → 4d | 55.5d → 27.5d | Sprint 1 Complete → none | resources Testerzy [50%] → Testerzy; baseline start none → 2015-02-24; baseline finish none → 2015-04-17 |
| 25 | **Testy jednostkowe** | 2015-05-28 → 2014-12-29 (-150d) | 2015-06-17 → 2015-01-15 (-153d) | 15d → 13.5d |  | none → 23 | baseline start none → 2015-05-28; baseline finish none → 2015-06-17 |
| 26 | Code review | 2015-05-28 → 2014-12-29 (-150d) | 2015-06-03 → 2015-01-02 (-152d) |  |  |  | baseline start none → 2015-05-28; baseline finish none → 2015-06-03 |
| 27 | Testowanie kodu w odniesieniu do specyfikacji | 2015-06-04 → 2015-01-05 (-150d) | 2015-06-05 → 2015-01-06 (-150d) |  |  |  | baseline start none → 2015-06-04; baseline finish none → 2015-06-05 |
| 28 | Identyfikacja niezgodności ze specyfikacją produktu | 2015-06-08 → 2015-01-07 (-152d) | 2015-06-10 → 2015-01-08 (-153d) | 3d → 1.5d |  |  | resources Testerzy; Deweloper [50%] → Testerzy; Deweloper; baseline start none → 2015-06-08; baseline finish none → 2015-06-10 |
| 29 | Modyfikacje kodu | 2015-06-11 → 2015-01-08 (-154d) | 2015-06-15 → 2015-01-13 (-153d) |  |  |  | baseline start none → 2015-06-11; baseline finish none → 2015-06-15 |
| 30 | Testowanie zmienionego kodu | 2015-06-16 → 2015-01-13 (-154d) | 2015-06-17 → 2015-01-15 (-153d) |  |  |  | baseline start none → 2015-06-16; baseline finish none → 2015-06-17 |
| 31 | Testowanie zakończone | 2015-06-17 → 2015-01-15 (-153d) | 2015-06-17 → 2015-01-15 (-153d) |  |  |  | baseline start none → 2015-06-17; baseline finish none → 2015-06-17 |
| 32 | **Testy integracyjne** | 2015-06-18 → 2015-01-15 (-154d) | 2015-07-03 → 2015-02-02 (-151d) |  |  | none → 24 | baseline start none → 2015-06-18; baseline finish none → 2015-07-03 |
| 33 | Testowanie zintegrowanych modułów | 2015-06-18 → 2015-01-15 (-154d) | 2015-06-24 → 2015-01-22 (-153d) |  |  |  | baseline start none → 2015-06-18; baseline finish none → 2015-06-24 |
| 34 | Identyfikacja anomalii w odniesieniu do specyfikacji produktu | 2015-06-25 → 2015-01-22 (-154d) | 2015-06-26 → 2015-01-26 (-151d) |  |  |  | baseline start none → 2015-06-25; baseline finish none → 2015-06-26 |
| 35 | Zmiany kodu | 2015-06-29 → 2015-01-26 (-154d) | 2015-07-01 → 2015-01-29 (-153d) |  |  |  | baseline start none → 2015-06-29; baseline finish none → 2015-07-01 |
| 36 | Testowanie zmienionego kodu | 2015-07-02 → 2015-01-29 (-154d) | 2015-07-03 → 2015-02-02 (-151d) |  |  |  | baseline start none → 2015-07-02; baseline finish none → 2015-07-03 |
| 37 | Testowanie integracyjne zakończone | 2015-07-03 → 2015-02-02 (-151d) | 2015-07-03 → 2015-02-02 (-151d) |  |  |  | baseline start none → 2015-07-03; baseline finish none → 2015-07-03 |
| 38 | **Dokumentacja** | 2014-10-27 → 2015-02-02 (+98d) | 2015-05-20 → 2015-03-30 (-51d) | 148d → 40d | 32d → 0d | none → 22 | baseline start none → 2014-10-27; baseline finish none → 2015-05-20 |
| 39 | Dokumentacja | 2014-10-27 → 2015-02-02 (+98d) | 2014-12-08 → 2015-03-16 (+98d) |  | 149.5d → 9.5d |  | baseline start none → 2014-10-27; baseline finish none → 2014-12-08 |
| 40 | Tworzenie systemu pomocy | 2015-03-26 → 2015-02-02 (-52d) | 2015-05-06 → 2015-03-16 (-51d) |  | 32d → 0d |  | baseline start none → 2015-03-26; baseline finish none → 2015-05-06 |
| 41 | Recenzja dokumentacji supportowej | 2015-05-07 → 2015-03-16 (-52d) | 2015-05-14 → 2015-03-24 (-51d) |  | 32d → 0d |  | baseline start none → 2015-05-07; baseline finish none → 2015-05-14 |
| 42 | Właczenie wyników feedbacku do dokumentacji supportowej | 2015-05-15 → 2015-03-24 (-52d) | 2015-05-20 → 2015-03-30 (-51d) |  | 32d → 0d |  | baseline start none → 2015-05-15; baseline finish none → 2015-05-20 |
| 43 | Rozwijanie specyfikacji instrukcji użytkownika | 2015-02-24 → 2015-02-02 (-22d) | 2015-02-25 → 2015-02-04 (-21d) |  | 73d → 19d | Sprint 1 Complete → none | baseline start none → 2015-02-24; baseline finish none → 2015-02-25 |
| 44 | Rozwijanie instrukcji użytkownika | 2015-03-26 → 2015-02-04 (-50d) | 2015-04-15 → 2015-02-25 (-49d) |  | 53d → 19d |  | baseline start none → 2015-03-26; baseline finish none → 2015-04-15 |
| 45 | Recenzja dokumentacji użytkownika | 2015-04-16 → 2015-02-25 (-50d) | 2015-04-17 → 2015-02-27 (-49d) |  | 53d → 19d |  | baseline start none → 2015-04-16; baseline finish none → 2015-04-17 |
| 46 | Zmiana pod kątem feedback'u użytkownika | 2015-04-20 → 2015-02-27 (-52d) | 2015-04-21 → 2015-03-03 (-49d) |  | 53d → 19d |  | baseline start none → 2015-04-20; baseline finish none → 2015-04-21 |
| 47 | Tworzenie dokumentacji zakończone | 2015-05-20 → 2015-03-30 (-51d) | 2015-05-20 → 2015-03-30 (-51d) |  | 32d → 0d |  | baseline start none → 2015-05-20; baseline finish none → 2015-05-20 |
| 48 | **Deployment** | 2014-10-27 → 2015-02-02 (+98d) | 2014-10-30 → 2015-02-06 (+99d) |  | 79d → 36d | none → 22 | baseline start none → 2014-10-27; baseline finish none → 2014-10-30 |
| 49 | Określenie ostatecznej strategii wdrażania | 2014-10-27 → 2015-02-02 (+98d) | 2014-10-27 → 2015-02-03 (+99d) |  | 79d → 36d |  | baseline start none → 2014-10-27; baseline finish none → 2014-10-27 |
| 50 | Określenie metodologii wdrażania | 2014-10-28 → 2015-02-03 (+98d) | 2014-10-28 → 2015-02-04 (+99d) |  | 79d → 36d |  | baseline start none → 2014-10-28; baseline finish none → 2014-10-28 |
| 51 | Szkolenie teamu supportowego | 2014-10-29 → 2015-02-04 (+98d) | 2014-10-29 → 2015-02-05 (+99d) |  | 79d → 36d |  | baseline start none → 2014-10-29; baseline finish none → 2014-10-29 |
| 52 | Wdrożenie | 2014-10-30 → 2015-02-05 (+98d) | 2014-10-30 → 2015-02-06 (+99d) |  | 79d → 36d |  | baseline start none → 2014-10-30; baseline finish none → 2014-10-30 |
| 53 | Wdrożenie ukończone | 2014-10-30 → 2015-02-06 (+99d) | 2014-10-30 → 2015-02-06 (+99d) |  | 79d → 36d |  | baseline start none → 2014-10-30; baseline finish none → 2014-10-30 |
